# Proyecto Graduación

Schedule from MS Project, 2018-07-23 to 2018-11-09, status date 2018-06-20, costs in ₡.
Microsoft

## Calendars

- Estándar: Mon-Fri 09:00-13:00, 15:00-19:00; Sat-Sun off.

## Resources

| Resource | Rate |
| --- | --- |
| SM | 1250 |
| Compra |  |

## Schedule

| ID | WBS | Task | Duration | Start | Finish | Predecessors | Baseline start | Baseline finish | Baseline duration | Total slack | Free slack | Constraint | Resources | Work | Cost | Baseline cost |
| --- | --- | --- | --- | --- | --- | --- | --- | --- | --- | --- | --- | --- | --- | --- | --- | --- |
| 1 | 1 | Síntesis de requerimientos | 2d | 2018-07-23 | 2018-07-24 |  | 2018-07-23 | 2018-07-23 | 0.5d | 0d |  | must start on 2018-07-23 |  |  |  | 5,000 |
| 2 | 2 | **Objetivo 1** | 43.25d | 2018-07-25 | 2018-09-24 |  | 2018-07-23 | 2018-09-05 | 32.5d | 3d |  |  |  | 506h | 220,000 | 245,000 |
| 3 | 2.1 | Lluvia de ideas | 2d | 2018-07-25 | 2018-07-26 | 1 | 2018-07-23 | 2018-07-23 | 0.5d | 21d | 11d | start no earlier than 2018-07-25 |  |  |  | 5,000 |
| 4 | 2.2 | Pruebas de concepto | 5d | 2018-07-26 | 2018-08-01 |  | 2018-07-24 | 2018-07-30 | 4.5d | 2d | 0d | start no earlier than 2018-07-26 |  |  |  | 45,000 |
| 5 | 2.3 | Compras | 330h | 2018-08-06 | 2018-08-20 | 4 | 2018-08-06 | 2018-08-20 | 336h | 0d |  | must start on 2018-08-06 | Compra | 330h |  |  |
| 6 | 2.4 | Especificaciones | 2d | 2018-08-02 | 2018-08-03 | 4 | 2018-07-31 | 2018-08-08 | 7d | 43.75d | 25d |  | SM | 16h | 20,000 | 70,000 |
| 7 | 2.5 | Diseño de esclusas | 10d | 2018-08-27 | 2018-09-07 | 5 | 2018-08-21 | 2018-08-30 | 8d | 18.75d | 0d | start no earlier than 2018-08-27 | SM | 80h | 100,000 | 80,000 |
| 8 | 2.6 | Manufactura del diseño | 10d | 2018-09-10 | 2018-09-24 | 7, 6 | 2018-08-31 | 2018-09-05 | 4d | 18.75d |  | start no earlier than 2018-08-23 | SM | 80h | 100,000 | 40,000 |
| 9 | 3 | **Objetivo 2** | 39d | 2018-08-13 | 2018-10-04 |  | 2018-08-09 | 2018-09-17 | 28d? | 4d |  |  |  | 512h | 220,000 | 180,000 |
| 10 | 3.1 | Diseño de transportadores | 10d | 2018-08-13 | 2018-08-24 | 3 | 2018-08-09 | 2018-08-17 | 7d | 10d |  | start no earlier than 2018-08-13 | SM | 80h | 100,000 | 70,000 |
| 11 | 3.2 | Compras | 336h | 2018-08-17 | 2018-08-31 |  | 2018-08-17 | 2018-08-31 | 336h | 0d |  | must start on 2018-08-17 | Compra | 336h |  |  |
| 12 | 3.3 | Manufactura del diseño | 10d | 2018-09-10 | 2018-09-21 | 11, 10 | 2018-09-03 | 2018-09-06 | 4d | 0d |  | start no earlier than 2018-09-08 | SM | 80h | 100,000 | 40,000 |
| 13 | 3.4 | Verificación de los componentes | 2d | 2018-09-24 | 2018-09-25 | 12 | 2018-09-07 | 2018-09-07 | 1d? | 0d |  |  | SM | 16h | 20,000 | 10,000 |
| 14 | 3.5 | Integración de los componentes | 5d | 2018-09-26 | 2018-10-02 | 13, 11 | 2018-09-10 | 2018-09-13 | 4d | 0d |  | start no earlier than 2018-09-10 |  |  |  | 40,000 |
| 15 | 3.6 | Verificar el subsistema | 2d | 2018-10-03 | 2018-10-04 | 14 | 2018-09-14 | 2018-09-17 | 2d | 10d |  | start no earlier than 2018-09-14 |  |  |  | 20,000 |
| 16 | 4 | **Objetivo 3** | 45d | 2018-08-17 | 2018-10-18 |  | 2018-08-17 | 2018-10-11 | 40d | 0d |  |  |  | 336h |  | 170,000 |
| 17 | 4.1 | Compras | 80h | 2018-08-17 | 2018-08-31 |  | 2018-08-17 | 2018-08-31 | 336h | 0d |  | must start on 2018-08-17 | Compra | 336h |  |  |
| 18 | 4.2 | Programar interface | 2d | 2018-10-03 | 2018-10-04 | 17, 14 | 2018-09-18 | 2018-09-19 | 2d | 0d |  | start no earlier than 2018-09-28 |  |  |  | 20,000 |
| 19 | 4.3 | Implementar circuitos, PCB y caja de protección | 3d | 2018-10-05 | 2018-10-09 | 18 | 2018-09-20 | 2018-09-20 | 1d | 0d |  |  |  |  |  | 10,000 |
| 20 | 4.4 | Generar códigos electrónicos | 3d | 2018-10-10 | 2018-10-12 | 19 | 2018-09-21 | 2018-09-21 | 1d | 0d |  |  |  |  |  | 10,000 |
| 21 | 4.5 | Programar secuencia de movimientos | 4d | 2018-10-15 | 2018-10-18 | 20 | 2018-09-24 | 2018-09-25 | 2d | 0d |  |  |  |  |  | 20,000 |
| 22 | 5 | **Objetivo 4** | 16d | 2018-10-19 | 2018-11-09 |  | 2018-10-12 | 2018-11-08 | 20d | 0d |  |  |  |  |  | 200,000 |
| 23 | 5.1 | Verificar funcionamiento general del sistema | 4d | 2018-10-19 | 2018-10-24 | 8, 15, 21 | 2018-10-12 | 2018-10-16 | 3d | 0d |  |  |  |  |  | 30,000 |
| 24 | 5.2 | Diseñar el experimento estadístico | 4d | 2018-10-25 | 2018-10-30 | 23 | 2018-10-17 | 2018-10-19 | 3d | 0d |  |  |  |  |  | 30,000 |
| 25 | 5.3 | Ejecutar el experimento | 4d | 2018-10-31 | 2018-11-05 | 24 | 2018-10-22 | 2018-10-24 | 3d | 0d |  |  |  |  |  | 30,000 |
| 26 | 5.4 | Analizar datos obtenidos | 4d | 2018-11-06 | 2018-11-09 | 25 | 2018-10-25 | 2018-10-30 | 4d | 0d |  |  |  |  |  | 40,000 |

| ID | WBS | Task | Duration | Start | Finish | Predecessors | Total slack | Free slack | Constraint |
| --- | --- | --- | --- | --- | --- | --- | --- | --- | --- |
| 27 | 6 | **Elaboración del informe final** | 80d | 2018-07-23 | 2018-11-09 |  |  |  |  |
| 28 | 6.1 | Marco teórico | 8.75d? | 2018-08-08 | 2018-08-20 |  | 24.25d | 0d | finish no earlier than 2018-08-20 |
| 29 | 6.2 | Solución propuesta | 24.75d? | 2018-08-20 | 2018-09-24 | 28 | 24.25d | 0d |  |
| 30 | 6.3 | Resultados | 7.5d? | 2018-09-24 | 2018-10-03 | 29 | 24.25d | 0d |  |
| 31 | 6.4 | Análisis | 1.75d? | 2018-10-04 | 2018-10-05 | 30 | 24.25d | 0d |  |
| 32 | 6.5 | Revisión de documento general | 1d? | 2018-10-05 | 2018-10-08 | 31 | 24.25d |  |  |
